Schedule from MS Project, 2026-02-02 to 2026-06-02, costs in $, A marks actual dates.

## Calendars

- ADSO: Mon-Fri 08:00-12:00, 13:00-17:00; Sat-Sun off. Exceptions (off unless hours are given): 2026-03-23 (Festivo 23 de marzo).

## Resources

| Resource | Rate |
| --- | --- |
| Analista | 30370 |
| Desarrodores junior | 28472.5 |
| Arquitecto Software | 75926 |
| Testing | 17500 |

## Schedule

| ID | WBS | Task | Duration | Start | Finish | Predecessors | Complete | Total slack | Resources | Work | Actual work | Cost | Actual cost |
| --- | --- | --- | --- | --- | --- | --- | --- | --- | --- | --- | --- | --- | --- |
| 1 | 1 | **Analisis** | 32d | 2026-02-02 A | 2026-03-17 A |  | 100% |  |  | 256h | 256h | 6,074,000 | 6,074,000 |
| 2 | 1.1 | Identificacion del problema | 1d | 2026-02-02 A | 2026-02-02 A |  | 100% |  | Analista | 8h | 8h |  |  |
| 3 | 1.2 | Definicion del alcance | 3d | 2026-02-03 A | 2026-02-05 A | 2 | 100% |  | Analista | 24h | 24h |  |  |
| 4 | 1.3 | Identificacion de stakeholders | 1d | 2026-02-06 A | 2026-02-06 A | 3 | 100% |  | Analista | 8h | 8h |  |  |
| 5 | 1.4 | Elaboracion de instrumentos | 2d | 2026-02-09 A | 2026-02-10 A | 4 | 100% |  | Analista | 16h | 16h |  |  |
| 6 | 1.5 | Aplicación de encuestas | 4d | 2026-02-11 A | 2026-02-16 A | 5 | 100% |  | Analista | 32h | 32h | 971,840 | 971,840 |
| 7 | 1.6 | Realizacion de entrevistas | 4d | 2026-02-17 A | 2026-02-20 A | 6 | 100% |  | Analista | 32h | 32h | 971,840 | 971,840 |
| 8 | 1.7 | Analisis de resultados | 3d | 2026-02-23 A | 2026-02-25 A | 7 | 100% |  | Analista | 24h | 24h | 728,880 | 728,880 |
| 9 | 1.8 | Levantamiento de requerimientos | 5d | 2026-02-26 A | 2026-03-04 A | 8 | 100% |  | Analista | 40h | 40h | 1,214,800 | 1,214,800 |
| 10 | 1.9 | Clasificacion de requerimientos(Fun/No Fun) | 2d | 2026-03-05 A | 2026-03-06 A | 9 | 100% |  | Analista | 16h | 16h | 485,920 | 485,920 |
| 11 | 1.10 | Elaboracion de documento de requisitos | 4d | 2026-03-09 A | 2026-03-12 A | 10 | 100% |  | Analista | 32h | 32h | 971,840 | 971,840 |
| 12 | 1.11 | Validacion con el cliente | 3d | 2026-03-13 A | 2026-03-17 A | 11 | 100% |  | Analista | 24h | 24h | 728,880 | 728,880 |
| 13 | 2 | **Diseño** | 7d | 2026-03-18 | 2026-03-27 |  |  | 0d |  | 106h |  | 6,434,735.98 |  |
| 14 | 2.1 | Diseño y diagrama de casos de usos | 2d | 2026-03-18 | 2026-03-19 | 1 |  | 0d | Arquitecto Software; Desarrodores junior | 26h |  | 1,499,540.7 |  |
| 15 | 2.2 | Modelo entidad-relacion | 2d | 2026-03-20 | 2026-03-24 | 14 |  | 3d | Arquitecto Software | 16h |  | 1,214,816 |  |
| 16 | 2.3 | Diseño de interfaces | 3d | 2026-03-20 | 2026-03-25 | 14 |  | 0d | Arquitecto Software; Desarrodores junior | 48h |  | 2,505,563.28 |  |
| 17 | 2.4 | Revision y ajustes | 2d | 2026-03-26 | 2026-03-27 | 16 |  | 0d | Arquitecto Software | 16h |  | 1,214,816 |  |
| 18 | 3 | **Desarrollo** | 21d | 2026-03-30 | 2026-04-27 |  |  | 0d |  | 392h |  | 13,467,486.88 |  |
| 19 | 3.1 | Configuracion del entorno | 1d | 2026-03-30 | 2026-03-30 | 13 |  | 0d | Desarrodores junior | 8h |  | 227,779.76 |  |
| 20 | 3.2 | Creacion de base de datos | 3d | 2026-03-31 | 2026-04-02 | 19 |  | 0d | Desarrodores junior; Arquitecto Software | 48h |  | 2,505,563.28 |  |
| 21 | 3.3 | **Desarrollo modulo de autenticacion** | 3d | 2026-03-31 | 2026-04-02 |  |  | 0d |  | 48h |  | 1,366,678.56 |  |
| 22 | 3.3.1 | Frontend Login | 3d | 2026-03-31 | 2026-04-02 | 19 |  | 0d | Desarrodores junior | 24h |  | 683,339.28 |  |
| 23 | 3.3.2 | Backend Login | 3d | 2026-03-31 | 2026-04-02 | 19 |  | 0d | Desarrodores junior | 24h |  | 683,339.28 |  |
| 24 | 3.4 | **Desarrollo modulo principal** | 5d | 2026-04-03 | 2026-04-09 | 20, 21 |  | 0d |  | 80h |  | 2,277,797.6 |  |
| 25 | 3.4.1 | Frontend módulo principal | 5d | 2026-04-03 | 2026-04-09 | 20 |  | 0d | Desarrodores junior | 40h |  | 1,138,898.8 |  |
| 26 | 3.4.2 | Backend módulo principal | 5d | 2026-04-03 | 2026-04-09 | 20 |  | 0d | Desarrodores junior | 40h |  | 1,138,898.8 |  |

| ID | WBS | Task | Duration | Start | Finish | Predecessors | Total slack | Resources | Work | Cost |
| --- | --- | --- | --- | --- | --- | --- | --- | --- | --- | --- |
| 27 | 3.5 | **Desarrollo modulos secundarios** | 4d | 2026-04-10 | 2026-04-15 | 24 | 0d |  | 64h | 1,822,238.08 |
| 28 | 3.5.1 | Frontend módulos secundarios | 4d | 2026-04-10 | 2026-04-15 | 26 | 0d | Desarrodores junior | 32h | 911,119.04 |
| 29 | 3.5.2 | Backend módulos secundarios | 4d | 2026-04-10 | 2026-04-15 | 26 | 0d | Desarrodores junior | 32h | 911,119.04 |
| 30 | 3.6 | Implementacion de validaciones | 2d | 2026-04-16 | 2026-04-17 | 24, 27 | 6d | Desarrodores junior | 16h | 455,559.52 |
| 31 | 3.7 | Integracion Frontend - Backend | 4d | 2026-04-16 | 2026-04-21 | 24, 27, 21 | 0d | Arquitecto Software; Desarrodores junior | 64h | 3,340,751.04 |
| 32 | 3.8 | Correccion de errores | 4d | 2026-04-22 | 2026-04-27 | 31 | 0d | Desarrodores junior; Testing | 64h | 1,471,119.04 |
| 33 | 4 | **Pruebas** | 20d | 2026-04-28 | 2026-05-25 |  | 0d |  | 296h | 8,221,129.36 |
| 34 | 4.1 | Elaboracion plan de pruebas | 1d | 2026-04-28 | 2026-04-28 | 18 | 0d | Testing | 8h | 140,000 |
| 35 | 4.2 | Diseño de casos de prueba | 3d | 2026-04-29 | 2026-05-01 | 34 | 0d | Testing | 24h | 420,000 |
| 36 | 4.3 | Pruebas funcionales | 4d | 2026-05-04 | 2026-05-07 | 35 | 0d | Desarrodores junior; Testing | 64h | 1,471,119.04 |
| 37 | 4.4 | Pruebas de integracion | 4d | 2026-05-08 | 2026-05-13 | 36 | 8d | Arquitecto Software; Desarrodores junior; Testing | 96h | 3,900,751.04 |
| 38 | 4.5 | Registro de incidencias | 3d | 2026-05-14 | 2026-05-18 | 36 | 0d | Testing | 24h | 420,000 |
| 39 | 4.6 | Correccion de fallos | 3d | 2026-05-19 | 2026-05-21 | 38 | 0d | Desarrodores junior; Testing | 48h | 1,103,339.28 |
| 40 | 4.7 | Pruebas de aceptacion | 2d | 2026-05-22 | 2026-05-25 | 39 | 0d | Analista; Testing | 32h | 765,920 |
| 41 | 5 | **Despliegue** | 6d | 2026-05-26 | 2026-06-02 |  | 0d |  | 88h | 3,499,263.04 |
| 42 | 5.1 | Configuracion servidor/hosting | 1d | 2026-05-26 | 2026-05-26 | 33 | 0d | Arquitecto Software; Desarrodores junior | 16h | 835,187.76 |
| 43 | 5.2 | Migracion base de datos | 1d | 2026-05-27 | 2026-05-27 | 42 | 0d | Arquitecto Software; Desarrodores junior | 16h | 835,187.76 |
| 44 | 5.3 | Publicacion del sistema | 1d | 2026-05-28 | 2026-05-28 | 43 | 0d | Arquitecto Software; Desarrodores junior | 16h | 835,187.76 |
| 45 | 5.4 | Pruebas de produccion | 1d | 2026-05-29 | 2026-05-29 | 44 | 0d | Desarrodores junior; Testing | 16h | 367,779.76 |
| 46 | 5.5 | Capacitacion usuarios | 1d | 2026-06-01 | 2026-06-01 | 45 | 0d | Analista | 8h | 242,960 |
| 47 | 5.6 | Entrega documentacion final | 1d | 2026-06-02 | 2026-06-02 | 46 | 0d | Analista; Testing | 16h | 382,960 |
